Schedule from GanttProject, 2008-12-04 to 2009-06-26.

## Calendars

- Project calendar: Mon-Fri working; Sat-Sun off. Exceptions (off unless hours are given): 2008-12-08 to 2008-12-10, 2008-12-15 to 2008-12-17, 2008-12-22 to 2008-12-26, 2008-12-29 to 2009-01-02, 2009-01-05 to 2009-01-07, 2009-01-12 to 2009-01-14, 2009-01-19 to 2009-01-21, 2009-01-26 to 2009-01-28, 2009-02-02 to 2009-02-04, 2009-02-09 to 2009-02-11, 2009-02-16 to 2009-02-20, 2009-02-23 to 2009-02-25, 2009-03-02 to 2009-03-04, 2009-03-09 to 2009-03-11, 2009-03-16 to 2009-03-18, 2009-03-23 to 2009-03-25.

## Resources

| Resource | Group |
| --- | --- |
| Henri Darmet |  |
| Florian Mounier | Concepteur Developpeur |

## Schedule

| ID | WBS | Task | Duration | Start | Finish | Predecessors | Complete | Resources |
| --- | --- | --- | --- | --- | --- | --- | --- | --- |
| 1 | 1 | Prototype | 1d | 2008-12-04 | 2008-12-04 |  | 100% | Henri Darmet |
| 2 | 2 | **Project Management** | 91d | 2008-12-05 | 2009-06-25 |  | 12% |  |
| 3 | 2.1 | **Project Setup** | 3d | 2008-12-05 | 2008-12-12 | 1 | 100% |  |
| 4 | 2.1.1 | Platform setup | 1d | 2008-12-05 | 2008-12-05 |  | 100% |  |
| 5 | 2.1.2 | Code Reorganization | 2d | 2008-12-11 | 2008-12-12 |  | 100% |  |
| 6 | 2.1.3 | Setting up a temporary svn | 1d | 2008-12-05 | 2008-12-05 |  | 100% |  |
| 7 | 2.2 | Wiki creation | 2d | 2009-02-05 | 2009-02-06 |  | 100% |  |
| 8 | 2.3 | Wiki Updating | 77d | 2009-02-12 | 2009-06-26 | 7 | 4% |  |
| 9 | 2.4 | Project's Gantt Diagram | 1d | 2009-02-26 | 2009-02-26 |  | 100% |  |
| 10 | 2.5 | Write a script to have a compiled application for each version | 1d | 2009-01-08 | 2009-01-08 |  | 100% |  |
| 11 | 2.6 | Move project to Google Code | 1d | 2009-01-09 | 2009-01-09 |  | 100% |  |
| 12 | 2.7 | Midterm internship meeting | 1d | 2009-02-27 | 2009-02-27 | 9 |  |  |
| 13 | 3 | **Graphical Layer Abstraction** | 7d | 2008-12-11 | 2009-01-15 |  | 100% |  |
| 14 | 3.1 | Set up a bridge for graphic engines | 2d | 2008-12-11 | 2008-12-12 |  | 100% |  |
| 15 | 3.2 | Integration of GWT Incubator graphic engine | 6d | 2008-12-12 | 2009-01-15 |  | 100% |  |
| 16 | 4 | **Visual Interface** | 7d | 2009-01-08 | 2009-01-29 |  | 100% |  |
| 17 | 4.1 | Creation | 1d | 2009-01-08 | 2009-01-08 |  | 100% |  |
| 18 | 4.2 | VI Code spearation | 2d | 2009-01-15 | 2009-01-16 |  | 100% |  |
| 19 | 4.3 | HTML Loading Screen | 1d | 2009-01-29 | 2009-01-29 |  | 100% |  |
| 20 | 5 | **Cleanness of code** | 1d | 2009-01-08 | 2009-01-08 |  | 75% |  |
| 21 | 5.1 | Code cleanup | 1d | 2009-01-08 | 2009-01-08 |  | 80% |  |
| 22 | 5.2 | **Code Rewrite** | 1d | 2009-01-08 | 2009-01-08 |  | 70% |  |
| 23 | 5.2.1 | Dynamic Edition System | 1d | 2009-01-08 | 2009-01-08 |  | 80% |  |
| 24 | 5.2.2 | Artifacts | 1d | 2009-01-08 | 2009-01-08 |  | 60% |  |
| 25 | 6 | Code JavaDoc | 1d | 2009-03-12 | 2009-03-12 |  |  |  |
| 26 | 7 | Interaction emulation layer | 1d | 2009-03-27 | 2009-03-27 |  |  |  |
| 27 | 8 | Adding object diagram for code generation | 1d | 2009-04-02 | 2009-04-02 |  |  |  |
| 28 | 9 | Saving diagram in xml like format | 1d | 2009-04-13 | 2009-04-13 |  |  |  |
| 29 | 10 | Setting a server side to save diagrams like documents in google docs | 1d | 2009-04-20 | 2009-04-20 |  |  |  |
| 30 | 11 | Adding other UML diagrams | 1d | 2009-05-04 | 2009-05-04 |  |  |  |

Notes:
- 1: Non mesuré
